# One Box_Project_Copy 2

How a schedule from MS Project changed from version to version. A marks actual dates.

## Version 1 (saved 2023-04-06, file One Box_Project_Final WBS before crashing.mpp)

| ID | WBS | Task | Duration | Start | Finish | Predecessors | Total float |
| --- | --- | --- | --- | --- | --- | --- | --- |
| 1 | 1 | **Magic Box Console** | 252d | 2023-01-02 | 2023-12-19 |  | 0d |
| 2 | 1.1 | **Project Planning and Management** | 19d | 2023-01-27 | 2023-02-22 |  | 0d |
| 3 |  | Define project scope and objectives | 5d | 2023-01-27 | 2023-02-02 | 10 | 0d |
| 4 |  | Develop project schedule | 7d | 2023-02-14 | 2023-02-22 | 11 | 0d |
| 5 |  | Establish project budget | 7d | 2023-02-14 | 2023-02-22 | 11 | 0d |
| 6 |  | Assemble project team | 2d | 2023-02-14 | 2023-02-15 | 11 | 5d |
| 7 |  | Develop project communication plan | 2d | 2023-02-16 | 2023-02-17 | 11 | 3d |
| 8 | 1.2 | **Requirement and concept development** | 45d | 2023-01-02 | 2023-03-03 |  | 0d |
| 9 |  | Conduct market research | 12d | 2023-01-02 | 2023-01-17 |  | 0d |
| 10 |  | Define product requirements | 7d | 2023-01-18 | 2023-01-26 | 9 | 0d |
| 11 |  | Develop product concept | 7d | 2023-02-03 | 2023-02-13 | 3 | 0d |
| 12 |  | Evaluate and select initial product design | 7d | 2023-02-23 | 2023-03-03 | 4, 5, 6, 7 | 0d |
| 13 |  | Business Process Outsourcing | 14d | 2023-05-08 | 2023-05-25 | 12FS+45d | 0d |
| 14 | 1.4 | **Product design and development** | 75d | 2023-05-26 | 2023-09-07 |  | 0d |
| 15 | 1.4.1 | **Hardware development** | 47d | 2023-05-26 | 2023-07-31 |  | 23d |
| 16 | 1.4.1.1 | **PCB design** | 28d | 2023-05-26 | 2023-07-04 |  | 37d |
| 17 |  | Network module | 21d | 2023-05-26 | 2023-06-23 | 12, 13 | 44d |
| 18 |  | Processor design | 21d | 2023-05-26 | 2023-06-23 | 12, 13 | 44d |
| 19 |  | GPU and RAM | 7d | 2023-06-26 | 2023-07-04 | 12, 13 | 37d |
| 20 |  | Storage and optical drive | 21d | 2023-05-26 | 2023-06-23 | 12, 13 | 44d |
| 21 |  | Sensors | 21d | 2023-05-26 | 2023-06-23 | 12, 13 | 44d |
| 22 | 1.4.1.2 | **Panel design** | 21d | 2023-06-26 | 2023-07-24 |  | 23d |
| 23 |  | Metal casing | 21d | 2023-06-26 | 2023-07-24 | 12, 13 | 23d |
| 24 |  | Display | 7d | 2023-06-26 | 2023-07-04 | 12, 13 | 37d |
| 25 |  | Switches | 7d | 2023-06-26 | 2023-07-04 | 12, 13 | 37d |
| 26 |  | Hardware doccumentation | 5d | 2023-07-25 | 2023-07-31 | 17, 18, 19, 20, 21, 23, 24, 25 | 23d |
| 27 | 1.4.2 | **Software development** | 70d | 2023-05-26 | 2023-08-31 |  | 0d |
| 28 |  | UI design | 45d | 2023-06-16 | 2023-08-17 | 12, 13 | 7d |
| 29 |  | Patch design | 67d | 2023-05-26 | 2023-08-28 | 12, 13 | 0d |
| 30 |  | Software documentation | 3d | 2023-08-29 | 2023-08-31 | 28, 29 | 0d |
| 31 |  | Design verification and validation | 5d | 2023-09-01 | 2023-09-07 | 26, 30 | 0d |
| 32 | 1.5 | **Component sourcing and procurement** | 32d | 2023-10-23 | 2023-12-05 |  | 0d |
| 33 |  | Source components and material | 18d | 2023-10-23 | 2023-11-15 | 41 | 0d |
| 34 |  | Finalize component contracts | 7d | 2023-11-16 | 2023-11-24 | 33 | 0d |
| 35 |  | Manage component delivery schedule | 7d | 2023-11-27 | 2023-12-05 | 34 | 0d |
| 36 | 1.6 | **Assembly and Testing** | 31d | 2023-09-08 | 2023-10-20 |  | 0d |
| 37 | 1.6.1 | **Assembly testing and validation of preprocessing units** | 24d | 2023-09-08 | 2023-10-11 |  | 0d |
| 38 |  | Prototype design | 12d | 2023-09-08 | 2023-09-25 | 31 | 0d |
| 39 |  | Prototype assembly | 5d | 2023-09-26 | 2023-10-02 | 38 | 0d |
| 40 |  | Prototype testing | 7d | 2023-10-03 | 2023-10-11 | 39 | 0d |
| 41 |  | Addressing any design issues or defects | 7d | 2023-10-12 | 2023-10-20 | 40 | 0d |
| 42 | 1.7 | **Mass production** | 73d | 2023-09-08 | 2023-12-19 |  | 0d |
| 43 |  | Establish production process | 50d | 2023-09-08 | 2023-11-16 | 31 | 13d |
| 44 |  | Assembly and batch maufacturing | 7d | 2023-12-06 | 2023-12-14 | 43, 35 | 0d |
| 45 |  | Qualiity control and Rolling out first batch | 3d | 2023-12-15 | 2023-12-19 | 44 | 0d |
| 46 | 1.8 | **Logistics and Distribution** | 0d | 2023-02-13 | 2023-02-13 |  | 221d |
| 47 |  | Develop logiostics plan | 0d | 2023-02-13 | 2023-02-13 | 11 | 196d |
| 48 |  | Packaging and shipping | 0d | 2023-02-13 | 2023-02-13 | 47 | 196d |
| 49 |  | Inventory and warehousing | 0d | 2023-02-13 | 2023-02-13 | 47, 48 | 196d |
| 50 |  | Coordinated product delivery and distribution | 0d | 2023-02-13 | 2023-02-13 | 49 | 196d |
| 51 | 1.9 | **Post -Launch Process** | 0d | 2023-02-13 | 2023-02-13 |  | 221d |
| 52 |  | Provide technical support and after sales customer services | 0d | 2023-02-13 | 2023-02-13 | 50 | 196d |
| 53 |  | Monitoring product performance | 0d | 2023-02-13 | 2023-02-13 | 50 | 196d |
| 54 |  | Addressing issues and performance improvements | 0d | 2023-02-13 | 2023-02-13 | 50 | 196d |

## Version 2 (saved 2023-04-06, file One Box_Project_Crashing_2.mpp)

Last finish 2023-12-19 → 2023-11-17 (-32d).

Changed:

| ID | Task | Start | Finish | Duration | Total float | Other |
| --- | --- | --- | --- | --- | --- | --- |
| 1 | **Magic Box Console** |  | 2023-12-19 → 2023-11-17 (-32d) | 252d → 230d |  | baseline start none → 2023-01-02; baseline finish none → 2023-12-19 |
| 2 | **Project Planning and Management** |  |  |  |  | baseline start none → 2023-01-27; baseline finish none → 2023-02-22 |
| 3 | Define project scope and objectives |  |  |  |  | baseline start none → 2023-01-27; baseline finish none → 2023-02-02 |
| 4 | Develop project schedule |  |  |  |  | baseline start none → 2023-02-14; baseline finish none → 2023-02-22 |
| 5 | Establish project budget |  |  |  |  | baseline start none → 2023-02-14; baseline finish none → 2023-02-22 |
| 6 | Assemble project team |  |  |  |  | baseline start none → 2023-02-14; baseline finish none → 2023-02-15 |
| 7 | Develop project communication plan |  |  |  |  | baseline start none → 2023-02-16; baseline finish none → 2023-02-17 |
| 8 | **Requirement and concept development** |  |  |  |  | baseline start none → 2023-01-02; baseline finish none → 2023-03-03 |
| 9 | Conduct market research |  |  |  |  | baseline start none → 2023-01-02; baseline finish none → 2023-01-17 |
| 10 | Define product requirements |  |  |  |  | baseline start none → 2023-01-18; baseline finish none → 2023-01-26 |
| 11 | Develop product concept |  |  |  |  | baseline start none → 2023-02-03; baseline finish none → 2023-02-13 |
| 12 | Evaluate and select initial product design |  |  |  |  | baseline start none → 2023-02-23; baseline finish none → 2023-03-03 |
| 13 | Business Process Outsourcing |  |  |  |  | baseline start none → 2023-05-08; baseline finish none → 2023-05-25 |
| 14 | **Product design and development** |  | 2023-09-07 → 2023-08-21 (-17d) | 75d → 62d |  | baseline start none → 2023-05-26; baseline finish none → 2023-09-07 |
| 15 | **Hardware development** |  |  |  | 23d → 10d | baseline start none → 2023-05-26; baseline finish none → 2023-07-31 |
| 16 | **PCB design** |  |  |  | 37d → 24d | baseline start none → 2023-05-26; baseline finish none → 2023-07-04 |
| 17 | Network module |  |  |  | 44d → 31d | baseline start none → 2023-05-26; baseline finish none → 2023-06-23 |
| 18 | Processor design |  |  |  | 44d → 31d | baseline start none → 2023-05-26; baseline finish none → 2023-06-23 |
| 19 | GPU and RAM |  |  |  | 37d → 24d | baseline start none → 2023-06-26; baseline finish none → 2023-07-04 |
| 20 | Storage and optical drive |  |  |  | 44d → 31d | baseline start none → 2023-05-26; baseline finish none → 2023-06-23 |
| 21 | Sensors |  |  |  | 44d → 31d | baseline start none → 2023-05-26; baseline finish none → 2023-06-23 |
| 22 | **Panel design** |  |  |  | 23d → 10d | baseline start none → 2023-06-26; baseline finish none → 2023-07-24 |
| 23 | Metal casing |  |  |  | 23d → 10d | baseline start none → 2023-06-26; baseline finish none → 2023-07-24 |
| 24 | Display |  |  |  | 37d → 24d | baseline start none → 2023-06-26; baseline finish none → 2023-07-04 |
| 25 | Switches |  |  |  | 37d → 24d | baseline start none → 2023-06-26; baseline finish none → 2023-07-04 |
| 26 | Hardware doccumentation |  |  |  | 23d → 10d | baseline start none → 2023-07-25; baseline finish none → 2023-07-31 |
| 27 | **Software development** |  | 2023-08-31 → 2023-08-14 (-17d) | 70d → 57d |  | baseline start none → 2023-05-26; baseline finish none → 2023-08-31 |
| 28 | UI design |  | 2023-08-17 → 2023-08-03 (-14d) | 45d → 35d | 7d → 5d | baseline start none → 2023-06-16; baseline finish none → 2023-08-17 |
| 29 | Patch design |  | 2023-08-28 → 2023-08-10 (-18d) | 67d → 55d |  | baseline start none → 2023-05-26; baseline finish none → 2023-08-28 |
| 30 | Software documentation | 2023-08-29 → 2023-08-11 (-18d) | 2023-08-31 → 2023-08-14 (-17d) | 3d → 2d |  | baseline start none → 2023-08-29; baseline finish none → 2023-08-31 |
| 31 | Design verification and validation | 2023-09-01 → 2023-08-15 (-17d) | 2023-09-07 → 2023-08-21 (-17d) |  |  | baseline start none → 2023-09-01; baseline finish none → 2023-09-07 |
| 32 | **Component sourcing and procurement** | 2023-10-23 → 2023-10-04 (-19d) | 2023-12-05 → 2023-11-06 (-29d) | 32d → 24d |  | baseline start none → 2023-10-23; baseline finish none → 2023-12-05 |
| 33 | Source components and material | 2023-10-23 → 2023-10-04 (-19d) | 2023-11-15 → 2023-10-17 (-29d) | 18d → 10d |  | baseline start none → 2023-10-23; baseline finish none → 2023-11-15 |
| 34 | Finalize component contracts | 2023-11-16 → 2023-10-18 (-29d) | 2023-11-24 → 2023-10-26 (-29d) |  |  | baseline start none → 2023-11-16; baseline finish none → 2023-11-24 |
| 35 | Manage component delivery schedule | 2023-11-27 → 2023-10-27 (-31d) | 2023-12-05 → 2023-11-06 (-29d) |  |  | baseline start none → 2023-11-27; baseline finish none → 2023-12-05 |
| 36 | **Assembly and Testing** | 2023-09-08 → 2023-08-22 (-17d) | 2023-10-20 → 2023-10-03 (-17d) |  |  | baseline start none → 2023-09-08; baseline finish none → 2023-10-20 |
| 37 | **Assembly testing and validation of preprocessing units** | 2023-09-08 → 2023-08-22 (-17d) | 2023-10-11 → 2023-09-22 (-19d) |  |  | baseline start none → 2023-09-08; baseline finish none → 2023-10-11 |
| 38 | Prototype design | 2023-09-08 → 2023-08-22 (-17d) | 2023-09-25 → 2023-09-06 (-19d) |  |  | baseline start none → 2023-09-08; baseline finish none → 2023-09-25 |
| 39 | Prototype assembly | 2023-09-26 → 2023-09-07 (-19d) | 2023-10-02 → 2023-09-13 (-19d) |  |  | baseline start none → 2023-09-26; baseline finish none → 2023-10-02 |
| 40 | Prototype testing | 2023-10-03 → 2023-09-14 (-19d) | 2023-10-11 → 2023-09-22 (-19d) |  |  | baseline start none → 2023-10-03; baseline finish none → 2023-10-11 |
| 41 | Addressing any design issues or defects | 2023-10-12 → 2023-09-25 (-17d) | 2023-10-20 → 2023-10-03 (-17d) |  |  | baseline start none → 2023-10-12; baseline finish none → 2023-10-20 |
| 42 | **Mass production** | 2023-09-08 → 2023-08-22 (-17d) | 2023-12-19 → 2023-11-17 (-32d) | 73d → 64d |  | baseline start none → 2023-09-08; baseline finish none → 2023-12-19 |
| 43 | Establish production process | 2023-09-08 → 2023-08-22 (-17d) | 2023-11-16 → 2023-10-30 (-17d) |  | 13d → 5d | baseline start none → 2023-09-08; baseline finish none → 2023-11-16 |
| 44 | Assembly and batch maufacturing | 2023-12-06 → 2023-11-07 (-29d) | 2023-12-14 → 2023-11-15 (-29d) |  |  | baseline start none → 2023-12-06; baseline finish none → 2023-12-14 |
| 45 | Qualiity control and Rolling out first batch | 2023-12-15 → 2023-11-16 (-29d) | 2023-12-19 → 2023-11-17 (-32d) | 3d → 2d |  | baseline start none → 2023-12-15; baseline finish none → 2023-12-19 |
| 46 | **Logistics and Distribution** |  |  |  | 221d → 199d | baseline start none → 2023-02-13; baseline finish none → 2023-02-13 |
| 47 | Develop logiostics plan |  |  |  | 196d → 199d | baseline start none → 2023-02-13; baseline finish none → 2023-02-13 |
| 48 | Packaging and shipping |  |  |  | 196d → 199d | baseline start none → 2023-02-13; baseline finish none → 2023-02-13 |
| 49 | Inventory and warehousing |  |  |  | 196d → 199d | baseline start none → 2023-02-13; baseline finish none → 2023-02-13 |
| 50 | Coordinated product delivery and distribution |  |  |  | 196d → 199d | baseline start none → 2023-02-13; baseline finish none → 2023-02-13 |
| 51 | **Post -Launch Process** |  |  |  | 221d → 199d | baseline start none → 2023-02-13; baseline finish none → 2023-02-13 |
| 52 | Provide technical support and after sales customer services |  |  |  | 196d → 199d | baseline start none → 2023-02-13; baseline finish none → 2023-02-13 |
| 53 | Monitoring product performance |  |  |  | 196d → 199d | baseline start none → 2023-02-13; baseline finish none → 2023-02-13 |
| 54 | Addressing issues and performance improvements |  |  |  | 196d → 199d | baseline start none → 2023-02-13; baseline finish none → 2023-02-13 |

## Version 3 (saved 2023-04-06, file One Box_Project_Earned Value Analysis.mpp)

Last finish stays 2023-11-17. Complete tasks 0 → 9.

Changed:

| ID | Task | Start | Finish | Complete | Total float |
| --- | --- | --- | --- | --- | --- |
| 1 | **Magic Box Console** | 2023-01-02 A |  | 0% → 14% |  |
| 2 | **Project Planning and Management** | 2023-01-27 A | 2023-02-22 A | 0% → 100% | 0d → none |
| 3 | Define project scope and objectives | 2023-01-27 A | 2023-02-02 A | 0% → 100% | 0d → none |
| 4 | Develop project schedule | 2023-02-14 A | 2023-02-22 A | 0% → 100% | 0d → none |
| 5 | Establish project budget | 2023-02-14 A | 2023-02-22 A | 0% → 100% | 0d → none |
| 6 | Assemble project team | 2023-02-14 A | 2023-02-15 A | 0% → 100% | 5d → none |
| 7 | Develop project communication plan | 2023-02-16 A | 2023-02-17 A | 0% → 100% | 3d → none |
| 8 | **Requirement and concept development** | 2023-01-02 A | 2023-03-03 A | 0% → 100% | 0d → none |
| 9 | Conduct market research | 2023-01-02 A | 2023-01-17 A | 0% → 100% | 0d → none |
| 10 | Define product requirements | 2023-01-18 A | 2023-01-26 A | 0% → 100% | 0d → none |
| 11 | Develop product concept | 2023-02-03 A | 2023-02-13 A | 0% → 100% | 0d → none |
| 12 | Evaluate and select initial product design | 2023-02-23 A | 2023-03-03 A | 0% → 100% | 0d → none |

## Version 4 (saved 2023-04-08, file One Box_Project_Initial WBS Phase 1.mpp)

Last finish 2023-11-17 → 2023-10-17 (-31d). Complete tasks 9 → 0.

Removed: 13 Business Process Outsourcing

Changed:

| ID | Task | Start | Finish | Duration | Complete | Total float | Predecessors | Other |
| --- | --- | --- | --- | --- | --- | --- | --- | --- |
| 1 | **Magic Box Console** | 2023-01-02 A → 2023-01-02 | 2023-11-17 → 2023-10-17 (-31d) | 230d → 207d | 14% → 0% |  |  | baseline start 2023-01-02 → none; baseline finish 2023-12-19 → none |
| 2 | **Project Planning and Management** | 2023-01-27 A → 2023-01-27 | 2023-02-22 A → 2023-02-22 |  | 100% → 0% | none → 0d |  | baseline start 2023-01-27 → none; baseline finish 2023-02-22 → none |
| 3 | Define project scope and objectives | 2023-01-27 A → 2023-01-27 | 2023-02-02 A → 2023-02-02 |  | 100% → 0% | none → 0d |  | baseline start 2023-01-27 → none; baseline finish 2023-02-02 → none |
| 4 | Develop project schedule | 2023-02-14 A → 2023-02-14 | 2023-02-22 A → 2023-02-22 |  | 100% → 0% | none → 0d |  | baseline start 2023-02-14 → none; baseline finish 2023-02-22 → none |
| 5 | Establish project budget | 2023-02-14 A → 2023-02-14 | 2023-02-22 A → 2023-02-22 |  | 100% → 0% | none → 0d |  | baseline start 2023-02-14 → none; baseline finish 2023-02-22 → none |
| 6 | Assemble project team | 2023-02-14 A → 2023-02-14 | 2023-02-15 A → 2023-02-15 |  | 100% → 0% | none → 5d |  | baseline start 2023-02-14 → none; baseline finish 2023-02-15 → none |
| 7 | Develop project communication plan | 2023-02-16 A → 2023-02-16 | 2023-02-17 A → 2023-02-17 |  | 100% → 0% | none → 3d |  | baseline start 2023-02-16 → none; baseline finish 2023-02-17 → none |
| 8 | **Requirement and concept development** | 2023-01-02 A → 2023-01-02 | 2023-03-03 A → 2023-03-03 |  | 100% → 0% | none → 0d |  | baseline start 2023-01-02 → none; baseline finish 2023-03-03 → none |
| 9 | Conduct market research | 2023-01-02 A → 2023-01-02 | 2023-01-17 A → 2023-01-17 |  | 100% → 0% | none → 0d |  | baseline start 2023-01-02 → none; baseline finish 2023-01-17 → none |
| 10 | Define product requirements | 2023-01-18 A → 2023-01-18 | 2023-01-26 A → 2023-01-26 |  | 100% → 0% | none → 0d |  | baseline start 2023-01-18 → none; baseline finish 2023-01-26 → none |
| 11 | Develop product concept | 2023-02-03 A → 2023-02-03 | 2023-02-13 A → 2023-02-13 |  | 100% → 0% | none → 0d |  | baseline start 2023-02-03 → none; baseline finish 2023-02-13 → none |
| 12 | Evaluate and select initial product design | 2023-02-23 A → 2023-02-23 | 2023-03-03 A → 2023-03-03 |  | 100% → 0% | none → 0d |  | baseline start 2023-02-23 → none; baseline finish 2023-03-03 → none |
| 13 | **Product design and development** | 2023-05-26 → 2023-03-06 (-81d) | 2023-08-21 → 2023-07-06 (-46d) | 62d → 89d |  |  |  | baseline start 2023-05-26 → none; baseline finish 2023-09-07 → none |
| 14 | **Hardware development** | 2023-05-26 → 2023-03-06 (-81d) | 2023-07-31 → 2023-05-09 (-83d) |  |  | 10d → 28d |  | baseline start 2023-05-26 → none; baseline finish 2023-07-31 → none |
| 15 | **PCB design** | 2023-05-26 → 2023-03-06 (-81d) | 2023-07-04 → 2023-05-02 (-63d) | 28d → 42d |  | 24d → 28d |  | baseline start 2023-05-26 → none; baseline finish 2023-07-04 → none |
| 16 | Network module | 2023-05-26 → 2023-03-06 (-81d) | 2023-06-23 → 2023-04-03 (-81d) |  |  | 31d → 49d | 12, Business Process Outsourcing → 12 | baseline start 2023-05-26 → none; baseline finish 2023-06-23 → none |
| 17 | Processor design | 2023-05-26 → 2023-03-06 (-81d) | 2023-06-23 → 2023-04-03 (-81d) |  |  | 31d → 49d | 12, Business Process Outsourcing → 12 | baseline start 2023-05-26 → none; baseline finish 2023-06-23 → none |
| 18 | GPU and RAM | 2023-06-26 → 2023-04-24 (-63d) | 2023-07-04 → 2023-05-02 (-63d) |  |  | 24d → 28d | 12, Business Process Outsourcing → 12 | baseline start 2023-06-26 → none; baseline finish 2023-07-04 → none |
| 19 | Storage and optical drive | 2023-05-26 → 2023-04-04 (-52d) | 2023-06-23 → 2023-05-02 (-52d) |  |  | 31d → 28d | 12, Business Process Outsourcing → 12 | baseline start 2023-05-26 → none; baseline finish 2023-06-23 → none |
| 20 | Sensors | 2023-05-26 → 2023-04-04 (-52d) | 2023-06-23 → 2023-05-02 (-52d) |  |  | 31d → 28d | 12, Business Process Outsourcing → 12 | baseline start 2023-05-26 → none; baseline finish 2023-06-23 → none |
| 21 | **Panel design** | 2023-06-26 → 2023-03-06 (-112d) | 2023-07-24 → 2023-04-21 (-94d) | 21d → 35d |  | 10d → 35d |  | resources none → OC Design Team; OC Development Team; baseline start 2023-06-26 → none; baseline finish 2023-07-24 → none |
| 22 | Metal casing | 2023-06-26 → 2023-03-06 (-112d) | 2023-07-24 → 2023-04-03 (-112d) |  |  | 10d → 49d | 12, Business Process Outsourcing → 12 | baseline start 2023-06-26 → none; baseline finish 2023-07-24 → none |
| 23 | Display | 2023-06-26 → 2023-04-04 (-83d) | 2023-07-04 → 2023-04-12 (-83d) |  |  | 24d → 42d | 12, Business Process Outsourcing → 12 | baseline start 2023-06-26 → none; baseline finish 2023-07-04 → none |
| 24 | Switches | 2023-06-26 → 2023-04-13 (-74d) | 2023-07-04 → 2023-04-21 (-74d) |  |  | 24d → 35d | 12, Business Process Outsourcing → 12 | baseline start 2023-06-26 → none; baseline finish 2023-07-04 → none |
| 25 | Hardware doccumentation | 2023-07-25 → 2023-05-03 (-83d) | 2023-07-31 → 2023-05-09 (-83d) |  |  | 10d → 28d |  | baseline start 2023-07-25 → none; baseline finish 2023-07-31 → none |
| 26 | **Software development** | 2023-05-26 → 2023-03-06 (-81d) | 2023-08-14 → 2023-06-16 (-59d) | 57d → 75d |  |  |  | baseline start 2023-05-26 → none; baseline finish 2023-08-31 → none |
| 27 | UI design | 2023-06-16 → 2023-03-06 (-102d) | 2023-08-03 → 2023-05-26 (-69d) | 35d → 60d |  | 5d → 10d | 12, Business Process Outsourcing → 12 | baseline start 2023-06-16 → none; baseline finish 2023-08-17 → none |
| 28 | Patch design | 2023-05-26 → 2023-03-06 (-81d) | 2023-08-10 → 2023-06-09 (-62d) | 55d → 70d |  |  | 12, Business Process Outsourcing → 12 | baseline start 2023-05-26 → none; baseline finish 2023-08-28 → none |
| 29 | Software documentation | 2023-08-11 → 2023-06-12 (-60d) | 2023-08-14 → 2023-06-16 (-59d) | 2d → 5d |  |  |  | baseline start 2023-08-29 → none; baseline finish 2023-08-31 → none |
| 30 | Design verification and validation | 2023-08-15 → 2023-06-19 (-57d) | 2023-08-21 → 2023-07-06 (-46d) | 5d → 14d |  |  |  | baseline start 2023-09-01 → none; baseline finish 2023-09-07 → none |
| 31 | **Component sourcing and procurement** | 2023-10-04 → 2023-08-17 (-48d) | 2023-11-06 → 2023-09-22 (-45d) | 24d → 27d |  | 0d → 4d |  | baseline start 2023-10-23 → none; baseline finish 2023-12-05 → none |
| 32 | Source components and material | 2023-10-04 → 2023-08-17 (-48d) | 2023-10-17 → 2023-09-06 (-41d) | 10d → 15d |  | 0d → 4d |  | baseline start 2023-10-23 → none; baseline finish 2023-11-15 → none |
| 33 | Finalize component contracts | 2023-10-18 → 2023-09-07 (-41d) | 2023-10-26 → 2023-09-15 (-41d) |  |  | 0d → 4d |  | baseline start 2023-11-16 → none; baseline finish 2023-11-24 → none |
| 34 | Manage component delivery schedule | 2023-10-27 → 2023-09-18 (-39d) | 2023-11-06 → 2023-09-22 (-45d) | 7d → 5d |  | 0d → 4d |  | baseline start 2023-11-27 → none; baseline finish 2023-12-05 → none |
| 35 | **Assembly and Testing** | 2023-08-22 → 2023-07-07 (-46d) | 2023-10-03 → 2023-08-16 (-48d) | 31d → 29d |  | 0d → 4d |  | baseline start 2023-09-08 → none; baseline finish 2023-10-20 → none |
| 36 | **Assembly testing and validation of preprocessing units** | 2023-08-22 → 2023-07-07 (-46d) | 2023-09-22 → 2023-08-09 (-44d) |  |  | 0d → 4d |  | baseline start 2023-09-08 → none; baseline finish 2023-10-11 → none |
| 37 | Prototype design | 2023-08-22 → 2023-07-07 (-46d) | 2023-09-06 → 2023-07-24 (-44d) |  |  | 0d → 4d |  | resources OC Development Team; OC Assembly/Test → Development; Assembly/Test; OC Assembly/Test; OC Development Team; baseline start 2023-09-08 → none; baseline finish 2023-09-25 → none |
| 38 | Prototype assembly | 2023-09-07 → 2023-07-25 (-44d) | 2023-09-13 → 2023-08-02 (-42d) | 5d → 7d |  | 0d → 4d |  | resources OC Development Team; OC Assembly/Test → OC Assembly/Test; OC Development Team; baseline start 2023-09-26 → none; baseline finish 2023-10-02 → none |
| 39 | Prototype testing | 2023-09-14 → 2023-08-03 (-42d) | 2023-09-22 → 2023-08-09 (-44d) | 7d → 5d |  | 0d → 4d |  | resources OC Design Team; OC Development Team; OC Assembly/Test; Assembly/Test → Assembly/Test; OC Assembly/Test; OC Design Team; OC Development Team; baseline start 2023-10-03 → none; baseline finish 2023-10-11 → none |
| 40 | Addressing any design issues or defects | 2023-09-25 → 2023-08-10 (-46d) | 2023-10-03 → 2023-08-16 (-48d) | 7d → 5d |  | 0d → 4d |  | resources OC Design Team; OC Development Team; OC Assembly/Test → OC Assembly/Test; OC Design Team; OC Development Team; baseline start 2023-10-12 → none; baseline finish 2023-10-20 → none |
| 41 | **Mass production** | 2023-08-22 → 2023-07-07 (-46d) | 2023-11-17 → 2023-10-17 (-31d) | 64d → 73d |  |  |  | baseline start 2023-09-08 → none; baseline finish 2023-12-19 → none |
| 42 | Establish production process | 2023-08-22 → 2023-07-07 (-46d) | 2023-10-30 → 2023-09-28 (-32d) | 50d → 60d |  | 5d → 0d |  | baseline start 2023-09-08 → none; baseline finish 2023-11-16 → none |
| 43 | Assembly and batch maufacturing | 2023-11-07 → 2023-09-29 (-39d) | 2023-11-15 → 2023-10-12 (-34d) | 7d → 10d |  |  |  | baseline start 2023-12-06 → none; baseline finish 2023-12-14 → none |
| 44 | Qualiity control and Rolling out first batch | 2023-11-16 → 2023-10-13 (-34d) | 2023-11-17 → 2023-10-17 (-31d) | 2d → 3d |  |  |  | baseline start 2023-12-15 → none; baseline finish 2023-12-19 → none |
| 45 | **Logistics and Distribution** |  |  |  |  | 199d → 176d |  | baseline start 2023-02-13 → none; baseline finish 2023-02-13 → none |
| 46 | Develop logiostics plan |  |  |  |  | 199d → 176d |  | baseline start 2023-02-13 → none; baseline finish 2023-02-13 → none |
| 47 | Packaging and shipping |  |  |  |  | 199d → 176d |  | baseline start 2023-02-13 → none; baseline finish 2023-02-13 → none |
| 48 | Inventory and warehousing |  |  |  |  | 199d → 176d |  | baseline start 2023-02-13 → none; baseline finish 2023-02-13 → none |
| 49 | Coordinated product delivery and distribution |  |  |  |  | 199d → 176d |  | baseline start 2023-02-13 → none; baseline finish 2023-02-13 → none |
| 50 | **Post -Launch Process** |  |  |  |  | 199d → 176d |  | baseline start 2023-02-13 → none; baseline finish 2023-02-13 → none |
| 51 | Provide technical support and after sales customer services |  |  |  |  | 199d → 176d |  | baseline start 2023-02-13 → none; baseline finish 2023-02-13 → none |
| 52 | Monitoring product performance |  |  |  |  | 199d → 176d |  | baseline start 2023-02-13 → none; baseline finish 2023-02-13 → none |
| 53 | Addressing issues and performance improvements |  |  |  |  | 199d → 176d |  | baseline start 2023-02-13 → none; baseline finish 2023-02-13 → none |

## Version 5 (saved 2023-04-08, file One Box_Project_Initial EV Measurement Phase 1.mpp)

Last finish stays 2023-10-17. Complete tasks 0 → 11.

Changed:

| ID | Task | Start | Finish | Complete | Total float |
| --- | --- | --- | --- | --- | --- |
| 1 | **Magic Box Console** | 2023-01-02 A |  | 0% → 42% |  |
| 2 | **Project Planning and Management** | 2023-01-27 A | 2023-02-22 A | 0% → 100% | 0d → none |
| 3 | Define project scope and objectives | 2023-01-27 A | 2023-02-02 A | 0% → 100% | 0d → none |
| 4 | Develop project schedule | 2023-02-14 A | 2023-02-22 A | 0% → 100% | 0d → none |
| 5 | Establish project budget | 2023-02-14 A | 2023-02-22 A | 0% → 100% | 0d → none |
| 6 | Assemble project team | 2023-02-14 A | 2023-02-15 A | 0% → 100% | 5d → none |
| 7 | Develop project communication plan | 2023-02-16 A | 2023-02-17 A | 0% → 100% | 3d → none |
| 8 | **Requirement and concept development** | 2023-01-02 A | 2023-03-03 A | 0% → 100% | 0d → none |
| 9 | Conduct market research | 2023-01-02 A | 2023-01-17 A | 0% → 100% | 0d → none |
| 10 | Define product requirements | 2023-01-18 A | 2023-01-26 A | 0% → 100% | 0d → none |
| 11 | Develop product concept | 2023-02-03 A | 2023-02-13 A | 0% → 100% | 0d → none |
| 12 | Evaluate and select initial product design | 2023-02-23 A | 2023-03-03 A | 0% → 100% | 0d → none |
| 13 | **Product design and development** | 2023-03-06 A |  | 0% → 50% |  |
| 14 | **Hardware development** | 2023-03-06 A |  | 0% → 75% |  |
| 15 | **PCB design** | 2023-03-06 A |  | 0% → 70% |  |
| 16 | Network module | 2023-03-06 A |  | 0% → 80% |  |
| 17 | Processor design | 2023-03-06 A |  | 0% → 80% |  |
| 19 | Storage and optical drive | 2023-04-04 A |  | 0% → 75% |  |
| 20 | Sensors | 2023-04-04 A |  | 0% → 70% |  |
| 21 | **Panel design** | 2023-03-06 A |  | 0% → 98% |  |
| 22 | Metal casing | 2023-03-06 A | 2023-04-03 A | 0% → 100% | 49d → none |
| 23 | Display | 2023-04-04 A | 2023-04-12 A | 0% → 100% | 42d → none |
| 24 | Switches | 2023-04-13 A |  | 0% → 90% |  |
| 26 | **Software development** | 2023-03-06 A |  | 0% → 31% |  |
| 27 | UI design | 2023-03-06 A |  | 0% → 35% |  |
| 28 | Patch design | 2023-03-06 A |  | 0% → 30% |  |
